# Capstone_Final_DW

Schedule from MS Project, 2023-05-29 to 2023-10-09, costs in $.

## Calendars

- Standard: Mon-Fri 08:00-12:00, 13:00-17:00; Sat-Sun off.

## Resources

| Resource | Group | Rate |
| --- | --- | --- |
| Environment Artist 01 | Environment | 35 |
| Environment Artist 02 | Environment | 35 |
| Environment Artist 03 | Environment | 35 |
| Environment Artist 04 | Environment | 35 |
| Environment Artist 05 | Environment | 35 |
| Environment Artist 06 | Environment | 35 |
| Environment Artist 07 | Environment | 35 |
| Environment Artist 08 | Environment | 35 |
| Environment Artist 09 | Environment | 35 |
| Environment Artist 10 | Environment | 35 |
| Environment Artist 11 | Environment | 35 |
| Environment Artist 12 | Environment | 35 |
| Environment Artist 13 | Environment | 35 |
| Environment Artist 14 | Environment | 35 |
| Environment Artist 15 | Environment | 35 |
| Environment Artist 16 | Environment | 35 |
| World Designer 01 | World Design | 40 |
| World Designer 02 | World Design | 40 |
| World Designer 03 | World Design | 40 |
| Quest Designer 01 | Quest | 40 |
| Quest Designer 02 | Quest | 40 |
| System Designer 01 | Systems | 35 |
| Creature Designer 01 | AI | 40 |
| VFX Artist 01 | VFX | 40 |
| VFX Artist 02 | VFX | 40 |
| SFX Engineer 01 | Audio | 35 |
| Character Artist 01 | Character Art | 35 |
| Character Artist 02 | Character Art | 35 |
| Character Artist 03 | Character Art | 35 |
| Terrain Artist 01 | Terrain | 45 |
| Concept Artist 01 | Concept | 30 |
| Concept Artist 02 | Concept | 30 |
| SFX Engineer 02 | Audio | 35 |
| Concept Artist 03 | Concept | 30 |
| Art Director | Lead | 55 |
| Design Director | Lead | 55 |
| Executive Producer | Owner | 65 |
| Creative Director | Owner | 65 |
| Producer 02 | Product | 40 |
| Producer 01 | Product | 40 |
| UX Artist 01 | 2D Art | 30 |
| Animator 01 | Animation | 40 |

## Schedule

| ID | WBS | Task | Duration | Start | Finish | Predecessors | Total slack | Free slack | Resources | Work | Cost |
| --- | --- | --- | --- | --- | --- | --- | --- | --- | --- | --- | --- |
| 1 | 1 | **Areas of Interest** | 85.67d | 2023-06-12 | 2023-10-09 |  | 0d |  |  | 2736h | 100,600 |
| 2 | 1.1 | AOI Reference Gathering | 8d | 2023-06-12 | 2023-06-21 | 104 | 0d |  | Creative Director; Art Director | 128h | 7,680 |
| 3 | 1.2 | **AOI 01 (Simple)** | 51d | 2023-07-06 | 2023-09-14 |  | 4.67d |  |  | 296h | 10,560 |
| 4 | 1.2.1 | AOI 01 - Concept | 3d | 2023-07-06 | 2023-07-10 | 2 | 4.67d | 0d | Concept Artist 01 | 24h | 720 |
| 5 | 1.2.2 | AOI 01 - Layout First Pass | 3d | 2023-07-11 | 2023-07-13 | 4 | 31d | 0d | Environment Artist 01 | 24h | 840 |
| 6 | 1.2.3 | AOI 01 - Asset Placement First Pass | 3d | 2023-07-14 | 2023-07-18 | 5 | 35.67d | 4d | Environment Artist 01 | 24h | 840 |
| 7 | 1.2.4 | AOI 01 - Enemy Placement First Pass | 5d | 2023-07-18 | 2023-07-24 | 5 | 31.67d | 0d | World Designer 01 | 40h | 1,600 |
| 8 | 1.2.5 | AOI 01 - VFX | 3d | 2023-08-01 | 2023-08-03 | 5, 6, 7 | 31.67d | 15d | VFX Artist 01 | 24h | 960 |
| 9 | 1.2.6 | AOI 01 - Set dressing | 5d | 2023-07-25 | 2023-07-31 | 5, 6, 7 | 34.67d | 18d | Environment Artist 01 | 40h | 1,400 |
| 10 | 1.2.7 | AOI 01 - Final Pass | 15d | 2023-08-25 | 2023-09-14 | 5, 6, 7, 8, 9, 161, 157 | 16.67d |  | Environment Artist 01 | 120h | 4,200 |
| 11 | 1.3 | **AOI 02 (Simple)** | 48d | 2023-07-11 | 2023-09-14 |  | 1.67d |  |  | 296h | 10,560 |
| 12 | 1.3.1 | AOI 02 - Concept | 3d | 2023-07-11 | 2023-07-13 | 2 | 1.67d | 0d | Concept Artist 01 | 24h | 720 |
| 13 | 1.3.2 | AOI 02 - Layout First Pass | 3d | 2023-07-14 | 2023-07-18 | 12 | 29d | 0d | Environment Artist 02 | 24h | 840 |
| 14 | 1.3.3 | AOI 02 - Asset Placement First Pass | 3d | 2023-07-19 | 2023-07-21 | 13 | 35d | 6d | Environment Artist 02 | 24h | 840 |
| 15 | 1.3.4 | AOI 02 - Enemy Placement First Pass | 5d | 2023-07-25 | 2023-07-31 | 13 | 29d | 0d | World Designer 02 | 40h | 1,600 |
| 16 | 1.3.5 | AOI 02 - VFX | 3d | 2023-08-04 | 2023-08-08 | 13, 14, 15 | 28.67d | 12d | VFX Artist 01 | 24h | 960 |
| 17 | 1.3.6 | AOI 02 - Set dressing | 5d | 2023-08-01 | 2023-08-07 | 13, 14, 15 | 29.67d | 13d | Environment Artist 02 | 40h | 1,400 |
| 18 | 1.3.7 | AOI 02 - Final Pass | 15d | 2023-08-25 | 2023-09-14 | 13, 14, 15, 16, 17, 161, 157 | 16.67d |  | Environment Artist 02 | 120h | 4,200 |
| 19 | 1.4 | **AOI 03 (Standard)** | 76d | 2023-06-22 | 2023-10-05 |  | 1.67d |  |  | 528h | 18,800 |
| 20 | 1.4.1 | AOI 03 - Concept | 5d | 2023-06-22 | 2023-06-28 | 2 | 12.67d | 0d | Concept Artist 01 | 40h | 1,200 |
| 21 | 1.4.2 | AOI 03 - Layout First Pass | 5d | 2023-06-29 | 2023-07-05 | 20 | 21.67d | 0d | Environment Artist 03 | 40h | 1,400 |
| 22 | 1.4.3 | AOI 03 - Asset Placement First Pass | 5d | 2023-07-06 | 2023-07-12 | 21 | 24.67d | 3d | Environment Artist 03 | 40h | 1,400 |
| 23 | 1.4.4 | AOI 03 - Enemy Placement First Pass | 8d | 2023-07-06 | 2023-07-17 | 21 | 21.67d | 0d | World Designer 01 | 64h | 2,560 |
| 24 | 1.4.5 | AOI 03 - VFX | 5d | 2023-07-18 | 2023-07-24 | 21, 22, 23 | 24.67d | 23d | VFX Artist 01 | 40h | 1,600 |
| 25 | 1.4.6 | AOI 03 - Set dressing | 8d | 2023-07-18 | 2023-07-27 | 21, 22, 23 | 21.67d | 20d | Environment Artist 03 | 64h | 2,240 |
| 26 | 1.4.7 | AOI 03 - Final Pass | 30d | 2023-08-25 | 2023-10-05 | 21, 22, 23, 24, 25, 161, 157 | 1.67d |  | Environment Artist 03 | 240h | 8,400 |

Notes:
- 10: Includes a final pass of Layout, Assets, and Set Dressing
- 18: Includes a final pass of Layout, Assets, and Set Dressing
- 26: Includes a final pass of Layout, Assets, and Set Dressing

| ID | WBS | Task | Duration | Start | Finish | Predecessors | Total slack | Free slack | Resources | Work | Cost |
| --- | --- | --- | --- | --- | --- | --- | --- | --- | --- | --- | --- |
| 27 | 1.5 | **AOI 04 (Standard)** | 71d | 2023-06-29 | 2023-10-05 |  | 1.67d |  |  | 528h | 18,800 |
| 28 | 1.5.1 | AOI 04 - Concept | 5d | 2023-06-29 | 2023-07-05 | 2 | 7.67d | 0d | Concept Artist 01 | 40h | 1,200 |
| 29 | 1.5.2 | AOI 04 - Layout First Pass | 5d | 2023-07-06 | 2023-07-12 | 28 | 16.67d | 0d | Environment Artist 04 | 40h | 1,400 |
| 30 | 1.5.3 | AOI 04 - Asset Placement First Pass | 5d | 2023-07-13 | 2023-07-19 | 29 | 19.67d | 3d | Environment Artist 04 | 40h | 1,400 |
| 31 | 1.5.4 | AOI 04 - Enemy Placement First Pass | 8d | 2023-07-13 | 2023-07-24 | 29 | 16.67d | 0d | World Designer 02 | 64h | 2,560 |
| 32 | 1.5.5 | AOI 04 - VFX | 5d | 2023-07-25 | 2023-07-31 | 29, 30, 31 | 19.67d | 18d | VFX Artist 01 | 40h | 1,600 |
| 33 | 1.5.6 | AOI 04 - Set dressing | 8d | 2023-07-25 | 2023-08-03 | 29, 30, 31 | 16.67d | 15d | Environment Artist 04 | 64h | 2,240 |
| 34 | 1.5.7 | AOI 04 - Final Pass | 30d | 2023-08-25 | 2023-10-05 | 29, 30, 31, 32, 33, 161, 157 | 1.67d |  | Environment Artist 04 | 240h | 8,400 |
| 35 | 1.6 | **AOI 05 (Complex)** | 77.67d | 2023-06-22 | 2023-10-09 |  | 0d |  |  | 960h | 34,200 |
| 36 | 1.6.1 | AOI 05 - Concept | 10d | 2023-06-22 | 2023-07-05 | 2 | 0d |  | Concept Artist 03 | 80h | 2,400 |
| 37 | 1.6.2 | AOI 05 - Layout First Pass | 10d | 2023-07-06 | 2023-07-19 | 36 | 0d |  | Environment Artist 05 | 80h | 2,800 |
| 38 | 1.6.3 | AOI 05 - Asset Placement First Pass | 10d | 2023-07-20 | 2023-08-02 | 37 | 5d |  | Environment Artist 05 | 80h | 2,800 |
| 39 | 1.6.4 | AOI 05 - Enemy Placement First Pass | 15d | 2023-07-20 | 2023-08-09 | 37 | 0d |  | World Designer 03 | 120h | 4,800 |
| 40 | 1.6.5 | AOI 05 - VFX | 10d | 2023-08-10 | 2023-08-23 | 37, 38, 39 | 5d |  | VFX Artist 01 | 80h | 3,200 |
| 41 | 1.6.6 | AOI 05 - Set dressing | 15d | 2023-08-10 | 2023-08-30 | 37, 38, 39 | 0d |  | Environment Artist 05 | 120h | 4,200 |
| 42 | 1.6.7 | AOI 05 - Final Pass | 27.67d | 2023-08-31 | 2023-10-09 | 37, 38, 39, 40, 41, 161, 157 | 0d |  | Environment Artist 05; Environment Artist 01; Environment Artist 02 | 400h | 14,000 |
| 43 | 2 | **Weapons** | 44d | 2023-06-27 | 2023-08-25 |  | 30.67d |  |  | 952h | 34,760 |
| 44 | 2.1 | **Weapon 01** | 17d | 2023-06-27 | 2023-07-19 |  | 57.67d |  |  | 136h | 5,000 |
| 45 | 2.1.1 | Weapon 01 - Reference | 1d | 2023-06-27 | 2023-06-27 | 104 | 57.67d | 0d | Creative Director | 8h | 520 |
| 46 | 2.1.2 | Weapon 01 - Concept | 3d | 2023-06-28 | 2023-06-30 | 45 | 57.67d | 0d | Concept Artist 02 | 24h | 720 |
| 47 | 2.1.3 | Weapon 01 - Modeling | 10d | 2023-07-03 | 2023-07-14 | 46 | 57.67d | 0d | Character Artist 02 | 80h | 2,800 |
| 48 | 2.1.4 | Weapon 01 - VFX | 3d | 2023-07-17 | 2023-07-19 | 47 | 57.67d |  | VFX Artist 02 | 24h | 960 |
| 49 | 2.2 | **Weapon 02** | 17d | 2023-07-06 | 2023-07-28 |  | 50.67d |  |  | 136h | 4,920 |
| 50 | 2.2.1 | Weapon 02 - Reference | 1d | 2023-07-06 | 2023-07-06 | 104 | 50.67d | 0d | Art Director | 8h | 440 |
| 51 | 2.2.2 | Weapon 02 - Concept | 3d | 2023-07-07 | 2023-07-11 | 50 | 50.67d | 0d | Concept Artist 02 | 24h | 720 |
| 52 | 2.2.3 | Weapon 02 - Modeling | 10d | 2023-07-12 | 2023-07-25 | 51 | 50.67d | 0d | Character Artist 03 | 80h | 2,800 |
| 53 | 2.2.4 | Weapon 02 - VFX | 3d | 2023-07-26 | 2023-07-28 | 52 | 50.67d |  | VFX Artist 02 | 24h | 960 |

Notes:
- 34: Includes a final pass of Layout, Assets, and Set Dressing
- 42: Includes a final pass of Layout, Assets, and Set Dressing

| ID | WBS | Task | Duration | Start | Finish | Predecessors | Total slack | Free slack | Resources | Work | Cost |
| --- | --- | --- | --- | --- | --- | --- | --- | --- | --- | --- | --- |
| 54 | 2.3 | **Weapon 03** | 26d | 2023-06-28 | 2023-08-02 |  | 47d |  |  | 136h | 5,000 |
| 55 | 2.3.1 | Weapon 03 - Reference | 1d | 2023-06-28 | 2023-06-28 | 104 | 47d | 0d | Creative Director | 8h | 520 |
| 56 | 2.3.2 | Weapon 03 - Concept | 3d | 2023-07-03 | 2023-07-05 | 55 | 47d | 0d | Concept Artist 02 | 24h | 720 |
| 57 | 2.3.3 | Weapon 03 - Modeling | 10d | 2023-07-17 | 2023-07-28 | 56 | 47.67d | 0d | Character Artist 02 | 80h | 2,800 |
| 58 | 2.3.4 | Weapon 03 - VFX | 3d | 2023-07-31 | 2023-08-02 | 57 | 47.67d |  | VFX Artist 02 | 24h | 960 |
| 59 | 2.4 | **Weapon 04** | 26d | 2023-07-07 | 2023-08-11 |  | 40.67d |  |  | 136h | 4,920 |
| 60 | 2.4.1 | Weapon 04 - Reference | 1d | 2023-07-07 | 2023-07-07 | 104 | 40.67d | 0d | Art Director | 8h | 440 |
| 61 | 2.4.2 | Weapon 04 - Concept | 3d | 2023-07-12 | 2023-07-14 | 60 | 40.67d | 0d | Concept Artist 02 | 24h | 720 |
| 62 | 2.4.3 | Weapon 04 - Modeling | 10d | 2023-07-26 | 2023-08-08 | 61 | 40.67d | 0d | Character Artist 03 | 80h | 2,800 |
| 63 | 2.4.4 | Weapon 04 - VFX | 3d | 2023-08-09 | 2023-08-11 | 62 | 40.67d |  | VFX Artist 02 | 24h | 960 |
| 64 | 2.5 | **Weapon 05** | 38d | 2023-06-29 | 2023-08-21 |  | 34.67d |  |  | 136h | 5,000 |
| 65 | 2.5.1 | Weapon 05 - Reference | 1d | 2023-06-29 | 2023-06-29 | 104 | 34.67d | 0d | Creative Director | 8h | 520 |
| 66 | 2.5.2 | Weapon 05 - Concept | 3d | 2023-07-06 | 2023-07-18 | 65 | 34.67d | 0d | Concept Artist 02 | 24h | 720 |
| 67 | 2.5.3 | Weapon 05 - Modeling | 10d | 2023-08-03 | 2023-08-16 | 66 | 34.67d | 0d | Character Artist 01 | 80h | 2,800 |
| 68 | 2.5.4 | Weapon 05 - VFX | 3d | 2023-08-17 | 2023-08-21 | 67 | 34.67d |  | VFX Artist 02 | 24h | 960 |
| 69 | 2.6 | **Weapon 06** | 28d | 2023-07-10 | 2023-08-16 |  | 37.67d |  |  | 136h | 4,920 |
| 70 | 2.6.1 | Weapon 06 - Reference | 1d | 2023-07-10 | 2023-07-10 | 104 | 37.67d | 0d | Art Director | 8h | 440 |
| 71 | 2.6.2 | Weapon 06 - Concept | 3d | 2023-07-19 | 2023-07-21 | 70 | 37.67d | 0d | Concept Artist 02 | 24h | 720 |
| 72 | 2.6.3 | Weapon 06 - Modeling | 10d | 2023-07-31 | 2023-08-11 | 71 | 37.67d | 0d | Character Artist 02 | 80h | 2,800 |
| 73 | 2.6.4 | Weapon 06 - VFX | 3d | 2023-08-14 | 2023-08-16 | 72 | 37.67d |  | VFX Artist 02 | 24h | 960 |
| 74 | 2.7 | **Weapon 07** | 41d | 2023-06-30 | 2023-08-25 |  | 30.67d |  |  | 136h | 5,000 |
| 75 | 2.7.1 | Weapon 07 - Reference | 1d | 2023-06-30 | 2023-06-30 | 104 | 30.67d | 0d | Creative Director | 8h | 520 |
| 76 | 2.7.2 | Weapon 07 - Concept | 3d | 2023-07-24 | 2023-07-26 | 75 | 30.67d | 0d | Concept Artist 02 | 24h | 720 |
| 77 | 2.7.3 | Weapon 07 - Modeling | 10d | 2023-08-09 | 2023-08-22 | 76 | 30.67d | 0d | Character Artist 03 | 80h | 2,800 |
| 78 | 2.7.4 | Weapon 07 - VFX | 3d | 2023-08-23 | 2023-08-25 | 77 | 30.67d |  | VFX Artist 02 | 24h | 960 |

| ID | WBS | Task | Duration | Start | Finish | Predecessors | Total slack | Free slack | Resources | Work | Cost |
| --- | --- | --- | --- | --- | --- | --- | --- | --- | --- | --- | --- |
| 79 | 3 | **Environment Biome** | 75d | 2023-06-22 | 2023-10-04 |  | 2.67d |  |  | 1520h | 58,400 |
| 80 | 3.1 | Biome Reference Gathering | 10d | 2023-06-22 | 2023-07-05 | 104 | 2.67d | 0d | Art Director | 80h | 4,400 |
| 81 | 3.2 | Trees - Proxy | 15d | 2023-07-06 | 2023-07-26 | 80 | 2.67d | 0d | Environment Artist 06 | 120h | 4,200 |
| 82 | 3.3 | Trees - Final | 22.5d | 2023-07-27 | 2023-08-28 | 81 | 30.17d |  | Environment Artist 15; Environment Artist 06 | 360h | 12,600 |
| 83 | 3.4 | Bushes - Proxy | 10d | 2023-07-06 | 2023-07-19 | 80 | 7.67d | 0d | Environment Artist 07 | 80h | 2,800 |
| 84 | 3.5 | Bushes - Final | 25d | 2023-07-20 | 2023-08-23 | 83 | 32.67d |  | Environment Artist 16; Environment Artist 07 | 240h | 8,400 |
| 85 | 3.6 | Groundcover - Proxy | 5d | 2023-07-06 | 2023-07-12 | 80 | 12.67d | 0d | Environment Artist 08 | 40h | 1,400 |
| 86 | 3.7 | Groundcover - Final | 15d | 2023-07-13 | 2023-08-02 | 85 | 47.67d |  | Environment Artist 08 | 120h | 4,200 |
| 87 | 3.8 | Terrain Modeling | 30d | 2023-07-27 | 2023-09-06 | 81, 83, 85 | 2.67d | 0d | Terrain Artist 01 | 240h | 10,800 |
| 88 | 3.9 | Design Rules Scripting | 10d | 2023-09-07 | 2023-09-20 | 87 | 12.67d |  | Terrain Artist 01 | 80h | 3,600 |
| 89 | 3.10 | Biome - VFX | 10d | 2023-09-07 | 2023-09-20 | 81, 83, 85, 87 | 2.67d | 0d | VFX Artist 01 | 80h | 3,200 |
| 90 | 3.11 | Biome - SFX | 10d | 2023-09-21 | 2023-10-04 | 89 | 2.67d |  | SFX Engineer 01 | 80h | 2,800 |
| 91 | 4 | **New Enemy** | 83d | 2023-06-12 | 2023-10-04 |  | 2.67d |  |  | 688h | 27,080 |
| 92 | 4.1 | Enemy - Reference | 6d | 2023-06-12 | 2023-06-26 |  | 4d | 0d | Creative Director; Design Director | 48h | 2,880 |
| 93 | 4.2 | Enemy - Concept | 5d | 2023-07-06 | 2023-07-12 | 92 | 2.67d | 0d | Concept Artist 03 | 40h | 1,200 |
| 94 | 4.3 | Enemy - Paper Design | 5d | 2023-06-27 | 2023-07-03 | 92 | 34.67d | 32d | Creature Designer 01 | 40h | 1,600 |
| 95 | 4.4 | Enemy - Modeling | 15d | 2023-07-13 | 2023-08-02 | 93 | 2.67d | 0d | Character Artist 01 | 120h | 4,200 |
| 96 | 4.5 | Enemy - Animation Rig | 10d | 2023-08-03 | 2023-08-16 | 95 | 2.67d | 0d | Animator 01 | 80h | 3,200 |
| 97 | 4.6 | Enemy - Attack Animations | 10d | 2023-08-17 | 2023-08-30 | 94, 95, 96 | 7.67d | 5d | Animator 01 | 80h | 3,200 |
| 98 | 4.7 | Enemy - Idle Animations | 5d | 2023-08-31 | 2023-09-06 | 94, 95, 96 | 2.67d | 0d | Animator 01 | 40h | 1,600 |
| 99 | 4.8 | Enemy - Design Scripting | 10d | 2023-09-07 | 2023-09-20 | 97, 98 | 12.67d |  | Creature Designer 01 | 80h | 3,200 |
| 100 | 4.9 | Enemy - VFX | 10d | 2023-09-07 | 2023-09-20 | 97, 98 | 2.67d | 0d | VFX Artist 02 | 80h | 3,200 |
| 101 | 4.10 | Enemy - SFX | 10d | 2023-09-21 | 2023-10-04 | 100 | 2.67d |  | SFX Engineer 02 | 80h | 2,800 |
| 102 | 5 | **Quests** | 85d | 2023-05-29 | 2023-09-22 |  | 0d |  |  | 1040h | 44,800 |
| 103 | 5.1 | **Main Story Quests** | 85d | 2023-05-29 | 2023-09-22 |  | 0d |  |  | 720h | 32,000 |
| 104 | 5.1.1 | Main Story - Lore Documentation | 10d | 2023-05-29 | 2023-06-09 |  | 0d |  | Creative Director; Design Director | 160h | 9,600 |
| 105 | 5.1.2 | Main Story - Quest Design | 20d | 2023-06-12 | 2023-07-07 | 104 | 10.67d | 0d | Quest Designer 01 | 160h | 6,400 |
| 106 | 5.1.3 | Main Story - Dialog Writing | 10d | 2023-07-24 | 2023-08-04 | 105 | 45.67d |  | Quest Designer 01 | 80h | 3,200 |
| 107 | 5.1.4 | Main Story - Design Scripting | 10d | 2023-07-10 | 2023-07-21 | 105 | 40.67d | 0d | Quest Designer 01 | 80h | 3,200 |
| 108 | 5.1.5 | Main Story - In-game Cinematics | 30d | 2023-07-10 | 2023-09-22 | 105 | 10.67d |  | Animator 01 | 240h | 9,600 |

| ID | WBS | Task | Duration | Start | Finish | Predecessors | Total slack | Free slack | Resources | Work | Cost |
| --- | --- | --- | --- | --- | --- | --- | --- | --- | --- | --- | --- |
| 109 | 5.2 | **Repeatables** | 40d | 2023-07-10 | 2023-09-01 |  | 25.67d |  |  | 320h | 12,800 |
| 110 | 5.2.1 | **Repeatable Quest 01** | 23d | 2023-07-10 | 2023-08-09 |  | 42.67d |  |  | 32h | 1,280 |
| 111 | 5.2.1.1 | Repeatable 01 - Quest Design | 2d | 2023-07-10 | 2023-07-11 | 104, 105 | 42.67d | 0d | Quest Designer 02 | 16h | 640 |
| 112 | 5.2.1.2 | Repeatable 01 - Dialog Writing | 1d | 2023-08-08 | 2023-08-08 | 111 | 43.67d |  | Quest Designer 02 | 8h | 320 |
| 113 | 5.2.1.3 | Repeatable 01 - Design Scripting | 1d | 2023-08-09 | 2023-08-09 | 111 | 42.67d |  | Quest Designer 02 | 8h | 320 |
| 114 | 5.2.2 | **Repeatable Quest 02** | 23d | 2023-07-12 | 2023-08-11 |  | 40.67d |  |  | 32h | 1,280 |
| 115 | 5.2.2.1 | Repeatable 02 - Quest Design | 2d | 2023-07-12 | 2023-07-13 | 104, 105 | 40.67d | 0d | Quest Designer 02 | 16h | 640 |
| 116 | 5.2.2.2 | Repeatable 02 - Dialog Writing | 1d | 2023-08-10 | 2023-08-10 | 115 | 41.67d |  | Quest Designer 02 | 8h | 320 |
| 117 | 5.2.2.3 | Repeatable 02 - Design Scripting | 1d | 2023-08-11 | 2023-08-11 | 115 | 40.67d |  | Quest Designer 02 | 8h | 320 |
| 118 | 5.2.3 | **Repeatable Quest 03** | 23d | 2023-07-14 | 2023-08-15 |  | 38.67d |  |  | 32h | 1,280 |
| 119 | 5.2.3.1 | Repeatable 03 - Quest Design | 2d | 2023-07-14 | 2023-07-17 | 104, 105 | 38.67d | 0d | Quest Designer 02 | 16h | 640 |
| 120 | 5.2.3.2 | Repeatable 03 - Dialog Writing | 1d | 2023-08-14 | 2023-08-14 | 119 | 39.67d |  | Quest Designer 02 | 8h | 320 |
| 121 | 5.2.3.3 | Repeatable 03 - Design Scripting | 1d | 2023-08-15 | 2023-08-15 | 119 | 38.67d |  | Quest Designer 02 | 8h | 320 |
| 122 | 5.2.4 | **Repeatable Quest 04** | 23d | 2023-07-18 | 2023-08-17 |  | 36.67d |  |  | 32h | 1,280 |
| 123 | 5.2.4.1 | Repeatable 04 - Quest Design | 2d | 2023-07-18 | 2023-07-19 | 104, 105 | 36.67d | 0d | Quest Designer 02 | 16h | 640 |
| 124 | 5.2.4.2 | Repeatable 04 - Dialog Writing | 1d | 2023-08-16 | 2023-08-16 | 123 | 37.67d |  | Quest Designer 02 | 8h | 320 |
| 125 | 5.2.4.3 | Repeatable 04 - Design Scripting | 1d | 2023-08-17 | 2023-08-17 | 123 | 36.67d |  | Quest Designer 02 | 8h | 320 |
| 126 | 5.2.5 | **Repeatable Quest 05** | 23d | 2023-07-20 | 2023-08-21 |  | 34.67d |  |  | 32h | 1,280 |
| 127 | 5.2.5.1 | Repeatable 05 - Quest Design | 2d | 2023-07-20 | 2023-07-21 | 104, 105 | 34.67d | 0d | Quest Designer 02 | 16h | 640 |
| 128 | 5.2.5.2 | Repeatable 05 - Dialog Writing | 1d | 2023-08-18 | 2023-08-18 | 127 | 35.67d |  | Quest Designer 02 | 8h | 320 |
| 129 | 5.2.5.3 | Repeatable 05 - Design Scripting | 1d | 2023-08-21 | 2023-08-21 | 127 | 34.67d |  | Quest Designer 02 | 8h | 320 |
| 130 | 5.2.6 | **Repeatable Quest 06** | 23d | 2023-07-24 | 2023-08-23 |  | 32.67d |  |  | 32h | 1,280 |
| 131 | 5.2.6.1 | Repeatable 06 - Quest Design | 2d | 2023-07-24 | 2023-07-25 | 104, 105 | 32.67d | 0d | Quest Designer 02 | 16h | 640 |
| 132 | 5.2.6.2 | Repeatable 06 - Dialog Writing | 1d | 2023-08-22 | 2023-08-22 | 131 | 33.67d |  | Quest Designer 02 | 8h | 320 |
| 133 | 5.2.6.3 | Repeatable 06 - Design Scripting | 1d | 2023-08-23 | 2023-08-23 | 131 | 32.67d |  | Quest Designer 02 | 8h | 320 |

| ID | WBS | Task | Duration | Start | Finish | Predecessors | Total slack | Free slack | Resources | Work | Cost |
| --- | --- | --- | --- | --- | --- | --- | --- | --- | --- | --- | --- |
| 134 | 5.2.7 | **Repeatable Quest 07** | 23d | 2023-07-26 | 2023-08-25 |  | 30.67d |  |  | 32h | 1,280 |
| 135 | 5.2.7.1 | Repeatable 07 - Quest Design | 2d | 2023-07-26 | 2023-07-27 | 104, 105 | 30.67d | 0d | Quest Designer 02 | 16h | 640 |
| 136 | 5.2.7.2 | Repeatable 07 - Dialog Writing | 1d | 2023-08-24 | 2023-08-24 | 135 | 31.67d |  | Quest Designer 02 | 8h | 320 |
| 137 | 5.2.7.3 | Repeatable 07 - Design Scripting | 1d | 2023-08-25 | 2023-08-25 | 135 | 30.67d |  | Quest Designer 02 | 8h | 320 |
| 138 | 5.2.8 | **Repeatable Quest 08** | 23d | 2023-07-28 | 2023-08-29 |  | 28.67d |  |  | 32h | 1,280 |
| 139 | 5.2.8.1 | Repeatable 08 - Quest Design | 2d | 2023-07-28 | 2023-07-31 | 104, 105 | 28.67d | 0d | Quest Designer 02 | 16h | 640 |
| 140 | 5.2.8.2 | Repeatable 08 - Dialog Writing | 1d | 2023-08-28 | 2023-08-28 | 139 | 29.67d |  | Quest Designer 02 | 8h | 320 |
| 141 | 5.2.8.3 | Repeatable 08 - Design Scripting | 1d | 2023-08-29 | 2023-08-29 | 139 | 28.67d |  | Quest Designer 02 | 8h | 320 |
| 142 | 5.2.9 | **Repeatable Quest 09** | 23d | 2023-08-01 | 2023-08-31 |  | 26.67d |  |  | 32h | 1,280 |
| 143 | 5.2.9.1 | Repeatable 09 - Quest Design | 2d | 2023-08-01 | 2023-08-02 | 104, 105 | 26.67d | 0d | Quest Designer 02 | 16h | 640 |
| 144 | 5.2.9.2 | Repeatable 09 - Dialog Writing | 1d | 2023-08-30 | 2023-08-30 | 143 | 27.67d |  | Quest Designer 02 | 8h | 320 |
| 145 | 5.2.9.3 | Repeatable 09 - Design Scripting | 1d | 2023-08-31 | 2023-08-31 | 143 | 26.67d |  | Quest Designer 02 | 8h | 320 |
| 146 | 5.2.10 | **Repeatable Quest 10** | 22d | 2023-08-03 | 2023-09-01 |  | 25.67d |  |  | 32h | 1,280 |
| 147 | 5.2.10.1 | Repeatable 10 - Quest Design | 2d | 2023-08-03 | 2023-08-04 | 104, 105 | 25.67d | 0d | Quest Designer 02 | 16h | 640 |
| 148 | 5.2.10.2 | Repeatable 10 - Dialog Writing | 1d | 2023-08-07 | 2023-08-07 | 147 | 44.67d |  | Quest Designer 02 | 8h | 320 |
| 149 | 5.2.10.3 | Repeatable 10 - Design Scripting | 1d | 2023-09-01 | 2023-09-01 | 147 | 25.67d |  | Quest Designer 02 | 8h | 320 |
| 150 | 6 | **Gameplay System** | 65d | 2023-06-12 | 2023-09-08 |  | 20.67d |  |  | 680h | 22,200 |
| 151 | 6.1 | 2D Art - Icons | 20d | 2023-07-03 | 2023-07-28 | 153 | 50.67d |  | UX Artist 01 | 160h | 4,800 |
| 152 | 6.2 | 2D Art - UI/UX Additions | 20d | 2023-08-14 | 2023-09-08 | 154 | 20.67d |  | UX Artist 01 | 160h | 4,800 |
| 153 | 6.3 | System - Design Documentation | 15d | 2023-06-12 | 2023-06-30 | 104 | 20.67d | 0d | System Designer 01 | 120h | 4,200 |
| 154 | 6.4 | System - Design Implementation | 30d | 2023-07-03 | 2023-08-11 | 153 | 20.67d | 0d | System Designer 01 | 240h | 8,400 |
| 155 | 7 | **Environment Assets** | 46d | 2023-06-22 | 2023-08-24 |  | 17.67d |  |  | 1440h | 50,400 |
| 156 | 7.1 | Structures - Proxy | 10d | 2023-06-22 | 2023-07-05 | 2, 104 | 17.67d | 0d | Environment Artist 10; Environment Artist 09 | 160h | 5,600 |
| 157 | 7.2 | Structures - Final | 20d | 2023-07-06 | 2023-08-02 | 156 | 17.67d | 16d | Environment Artist 09; Environment Artist 10; Environment Artist 16 | 480h | 16,800 |
| 158 | 7.3 | Interactables - Proxy | 5d | 2023-07-10 | 2023-07-14 | 2, 104, 105 | 45.67d | 5d | Environment Artist 12; Environment Artist 11 | 80h | 2,800 |
| 159 | 7.4 | Interactables - Final | 15d | 2023-07-24 | 2023-08-11 | 158, 107 | 40.67d |  | Environment Artist 12; Environment Artist 11 | 240h | 8,400 |
| 160 | 7.5 | Set Dressing - Proxy | 7.5d | 2023-07-14 | 2023-07-25 | 4, 12, 20, 28, 36 | 1.67d | 0d | Environment Artist 14; Environment Artist 13 | 120h | 4,200 |
| 161 | 7.6 | Set Dressing - Final | 22.5d | 2023-07-25 | 2023-08-24 | 160 | 1.67d | 0d | Environment Artist 14; Environment Artist 13 | 360h | 12,600 |
